# VACE-Controlling

Schedule from MS Project, 2006-10-16 to 2008-05-08.

## Calendars

- Standard: Mon-Fri 08:00-12:00, 13:00-17:00; Sat-Sun off.

## Schedule

| ID | WBS | Task | Type | Duration | Start | Finish | Predecessors | Total slack | Free slack | Constraint |
| --- | --- | --- | --- | --- | --- | --- | --- | --- | --- | --- |
| 1 | 1 | Projekt genehmigt | milestone | 0d | 2006-10-16 | 2006-10-16 |  | 232d | 0d | start no earlier than 2006-10-16 |
| 2 | 2 | Projektvorschlag erstellen |  | 6d? | 2006-10-16 | 2006-10-23 | 1 | 232d | 0d | finish no earlier than 2006-10-23 |
| 3 | 3 | Projekt beauftragt | milestone | 0d | 2006-10-23 | 2006-10-23 | 2 | 232d | 4d | start no earlier than 2006-10-16 |
| 4 | 4 | Projekthandbuch erstellen |  | 6d | 2006-10-30 | 2006-11-06 | 3 | 228d | 0d | start no earlier than 2006-10-30 |
| 5 | 5 | Start | milestone | 0d | 2006-11-06 | 2006-11-06 | 4 | 228d | 1d | start no earlier than 2006-10-30 |
| 6 | 6 | Pflichtenheft erstellen |  | 14d | 2006-11-08 | 2006-11-27 | 5 | 227d | 0d | finish no earlier than 2006-11-27 |
| 7 | 7 | Altsystemanalyse erstellen |  | 15d | 2006-11-28 | 2006-12-18 | 6 | 227d | 0d | finish no earlier than 2006-12-18 |
| 8 | 8 | Systemspezifikation erstellen |  | 20d | 2006-12-19 | 2007-01-15 | 7 | 227d | 0d | finish no earlier than 2006-12-25 |
| 9 | 9 | SW-Spezifikation erstellen |  | 20d | 2007-01-16 | 2007-02-12 | 8 | 227d | 0d | finish no earlier than 2007-01-22 |
| 10 | 10 | System spezifiziert | milestone | 0d | 2007-02-12 | 2007-02-12 | 9 | 227d | 0d | start no earlier than 2007-01-22 |
| 11 | 11 | Systemarchitektur erstellen |  | 20d | 2007-02-13 | 2007-03-12 | 10 | 227d | 0d |  |
| 12 | 12 | SW-Architektur erstellen |  | 20d | 2007-03-13 | 2007-04-09 | 11 | 227d | 0d |  |
| 13 | 13 | Datenbankentwurf erstellen |  | 10d | 2007-04-10 | 2007-04-23 | 12 | 227d | 0d | finish no earlier than 2007-02-12 |
| 14 | 14 | Implementierungs-, Integrations und Prüfkonzept erstellen |  | 20d | 2007-04-24 | 2007-05-21 | 13 | 227d | 0d | finish no earlier than 2007-03-05 |
| 15 | 15 | System entworfen | milestone | 0d | 2007-05-21 | 2007-05-21 | 14 | 227d | 0d | start no earlier than 2007-05-21 |
| 16 | 16 | Prototyp entwerfen |  | 25d | 2007-05-22 | 2007-06-25 | 15 | 227d |  | finish no earlier than 2007-06-20 |
| 17 | 17 | Start der Implementierung | milestone | 0d | 2007-09-17 | 2007-09-17 |  | 3d | 0d | start no earlier than 2007-09-17 |
| 18 | 18 | Datenbank aufsetzen/konfigurieren |  | 15d | 2007-09-17 | 2007-10-05 | 17 | 3d | 0d | finish no earlier than 2007-10-01 |
| 19 | 19 | **Entwerfen der Eingabeformulare/Masken** |  | 40d | 2007-10-08 | 2007-11-30 | 18 | 3d | 0d |  |
| 20 | 19.1 | Eingabe der Mitarbeiterdaten |  | 5d | 2007-10-08 | 2007-10-12 |  | 3d | 0d |  |
| 21 | 19.2 | Eingabe der Projektdaten |  | 5d | 2007-10-15 | 2007-10-19 | 20 | 3d | 0d |  |
| 22 | 19.3 | Eingabe der Fremdleistungen |  | 5d | 2007-10-22 | 2007-10-26 | 21 | 3d | 0d |  |
| 23 | 19.4 | Einlesen der Konditionen für Mitarbeiter |  | 5d | 2007-10-29 | 2007-11-02 | 22 | 3d | 0d |  |
| 24 | 19.5 | Eingabe der eingegangenen Zahlungen |  | 5d | 2007-11-05 | 2007-11-09 | 23 | 3d | 0d |  |
| 25 | 19.6 | Eingabe der produktiven Stunden |  | 5d | 2007-11-12 | 2007-11-16 | 24 | 3d | 0d |  |
| 26 | 19.7 | Eingabe der unproduktiven Stunden |  | 5d | 2007-11-19 | 2007-11-23 | 25 | 3d | 0d |  |
| 27 | 19.8 | Stundenkontrolle |  | 5d | 2007-11-26 | 2007-11-30 | 26 | 3d |  |  |
| 28 | 20 | Generieren der Zeiterfassungs-Excel Sheets |  | 20d | 2007-12-03 | 2007-12-28 | 19 | 3d | 0d |  |
| 29 | 21 | Generieren von Berichten |  | 25d | 2007-12-31 | 2008-02-01 | 28 | 3d | 0d |  |
| 30 | 22 | Zusammenfügen aller Funktionen |  | 30d | 2008-02-04 | 2008-03-14 | 29 | 3d | 0d |  |
| 31 | 23 | Testen |  | 15d | 2008-03-17 | 2008-04-04 | 30 | 3d | 0d |  |
| 32 | 24 | Systemende realisiert | milestone | 0d | 2008-04-04 | 2008-04-04 | 31 | 3d | 0d | start no earlier than 2007-03-26 |
| 33 | 25 | System in den Betrieb einführen |  | 10d | 2008-04-07 | 2008-04-18 | 32 | 3d | 0d |  |
| 34 | 26 | Testbetrieb |  | 5d | 2008-04-21 | 2008-04-25 | 33 | 3d |  |  |
| 35 | 27 | System integriert | milestone | 0d | 2008-05-01 | 2008-05-01 | 34 | 0d |  | start no earlier than 2008-05-01 |
| 36 | 28 | Lieferung durchführen |  | 5d | 2008-05-01 | 2008-05-07 | 35 | 0d |  |  |
| 37 | 29 | Lieferung durchgeführt | milestone | 0d | 2008-05-07 | 2008-05-07 | 36 | 0d |  | start no earlier than 2008-05-01 |
| 38 | 30 | Abnahme erfolgt | milestone | 0d | 2008-05-08 | 2008-05-08 | 37 | 0d |  | start no earlier than 2008-05-08 |
| 39 | 31 | Projektende | milestone | 0d | 2008-05-08 | 2008-05-08 | 38 | 0d |  | start no earlier than 2008-05-08 |
